# caTRIP_Project_Plan

Schedule from MS Project, 2006-05-01 to 2006-11-03, A marks actual dates.
Duke University

## Calendars

- Standard: Mon-Fri 08:00-12:00, 13:00-17:00; Sat-Sun off.

## Resources

| Resource |
| --- |
| Jeff |
| Patrick |
| Bob |
| Ram |
| Raj |
| Mark |
| Chris |
| Mark.Chris |
| Bioinformatics |
| domain expert |
| Jamie |
| Everyone |
| SB |
| Srini |
| Sanjeev |
| Bill |
| Vinay |
| Janet |
| TBD |
| Wilma |

## Schedule

| ID | WBS | Task | Duration | Start | Finish | Predecessors | Complete | Remaining | Total slack | Constraint | Resources | Work | Actual work |
| --- | --- | --- | --- | --- | --- | --- | --- | --- | --- | --- | --- | --- | --- |
| 1 | 1 | **Phase I** | 135d? | 2006-05-01 A | 2006-11-03 |  | 51% | 66.49d? | 0d |  |  | 20796h | 11558.5h |
| 2 | 1.1 | **Inception** | 25d | 2006-05-01 A | 2006-06-02 A |  | 100% |  |  |  |  | 4264h | 4264h |
| 3 | 1.1.1 | Draft project management plan | 25d | 2006-05-01 A | 2006-06-02 A |  | 100% |  |  |  | Patrick; Bob; Ram | 600h | 600h |
| 4 | 1.1.2 | Develop phase and iteration plan | 10d | 2006-05-01 A | 2006-05-12 A |  | 100% |  |  | finish no earlier than 2006-05-12 | SB | 80h | 80h |
| 5 | 1.1.3 | Draft communications plan | 25d | 2006-05-01 A | 2006-06-02 A |  | 100% |  |  |  | Patrick; Bob; Ram | 600h | 600h |
| 6 | 1.1.4 | Draft risk management matrix | 25d | 2006-05-01 A | 2006-06-02 A |  | 100% |  |  |  | Patrick; Ram | 400h | 400h |
| 7 | 1.1.5 | Develop scope and vision document | 12d | 2006-05-11 A | 2006-05-26 A |  | 100% |  |  | finish no earlier than 2006-05-26 | Patrick | 96h | 96h |
| 8 | 1.1.6 | Draft test plan | 25d | 2006-05-01 A | 2006-06-02 A |  | 100% |  |  |  | Patrick; Bob | 400h | 400h |
| 9 | 1.1.7 | Setup Gforge | 10d | 2006-05-01 A | 2006-05-12 A |  | 100% |  |  |  | Patrick | 80h | 80h |
| 10 | 1.1.8 | Setup development environment | 10d | 2006-05-15 A | 2006-05-26 A | 9 | 100% |  |  |  | Patrick | 80h | 80h |
| 11 | 1.1.9 | Define initial problem scenerios | 25d | 2006-05-01 A | 2006-06-02 A |  | 100% |  |  |  | Patrick; Bob; Raj | 600h | 600h |
| 12 | 1.1.10 | Define problem scenarios | 2d | 2006-05-24 A | 2006-05-25 A |  | 100% |  |  | finish no earlier than 2006-05-25 | Raj; Bob | 32h | 32h |
| 13 | 1.1.11 | Define initial scientific use cases | 20d | 2006-05-01 A | 2006-05-26 A |  | 100% |  |  |  | Patrick; Bob; Raj | 480h | 480h |
| 14 | 1.1.12 | Define initial system use cases | 20d | 2006-05-01 A | 2006-05-26 A |  | 100% |  |  |  | SB | 160h | 160h |
| 15 | 1.1.13 | Define initial datasets | 20d | 2006-05-01 A | 2006-05-26 A |  | 100% |  |  |  | Patrick; Bob; Raj | 480h | 480h |
| 16 | 1.1.14 | **Setup testbed** | 11d | 2006-05-01 A | 2006-05-15 A |  | 100% |  |  |  | Jeff | 176h | 176h |
| 17 | 1.1.14.1 | Purchase testbed | 10d | 2006-05-01 A | 2006-05-12 A |  | 100% |  |  |  | Jeff | 80h | 80h |
| 18 | 1.1.14.2 | Add testbed to backup cycle | 1d | 2006-05-15 A | 2006-05-15 A | 17 | 100% |  |  |  | Jeff | 8h | 8h |
| 19 | 1.2 | **Elaboration** | 60d? | 2006-06-05 A | 2006-08-25 | 2 | 57% | 25.95d? | 0d |  |  | 12736h | 7294.46h |
| 20 | 1.2.1 | **Iteration 1** | 30d? | 2006-06-05 A | 2006-07-14 |  | 81% | 5.61d? | 0d |  |  | 6996h | 5992h |
| 21 | 1.2.1.1 | **Draft use case document** | 30d? | 2006-06-05 A | 2006-07-14 A |  | 100% |  |  |  |  | 608h | 608h |
| 22 | 1.2.1.1.1 | Finalize scientific use cases | 30d? | 2006-06-05 A | 2006-07-14 A |  | 100% |  |  | finish no earlier than 2006-07-07 | SB | 240h | 240h |
| 23 | 1.2.1.1.2 | Finalize system use cases | 15d? | 2006-06-19 A | 2006-07-07 A |  | 100% |  |  | finish no earlier than 2006-07-07 | Sanjeev; Bill | 240h | 240h |
| 24 | 1.2.1.1.3 | Draft use cases | 8d | 2006-06-05 A | 2006-06-14 A |  | 100% |  |  | finish no earlier than 2006-06-01 | Patrick; Bob | 128h | 128h |

| ID | WBS | Task | Duration | Start | Finish | Predecessors | Complete | Remaining | Total slack | Free slack | Constraint | Resources | Work | Actual work |
| --- | --- | --- | --- | --- | --- | --- | --- | --- | --- | --- | --- | --- | --- | --- |
| 25 | 1.2.1.2 | **Draft requirements and specifications document** | 10d | 2006-06-05 A | 2006-06-16 A |  | 100% |  |  |  |  | Patrick; Bill; Ram | 520h | 520h |
| 26 | 1.2.1.2.1 | Translate use cases into requirements | 5d | 2006-06-05 A | 2006-06-09 A |  | 100% |  |  |  |  | Patrick; Bill | 80h | 80h |
| 27 | 1.2.1.2.2 | Create test traceability matrix | 5d | 2006-06-12 A | 2006-06-16 A | 26 | 100% |  |  |  |  | Patrick | 40h | 40h |
| 28 | 1.2.1.2.3 | Draft architecture UML diagrams | 10d | 2006-06-05 A | 2006-06-16 A |  | 100% |  |  |  |  | Patrick; Ram | 160h | 160h |
| 29 | 1.2.1.3 | Draft dataset document (draft) | 20d | 2006-06-05 A | 2006-06-30 A |  | 100% |  |  |  |  | Patrick; Bob; Mark | 480h | 480h |
| 30 | 1.2.1.4 | **Dataset preparation** | 7d | 2006-06-05 A | 2006-06-13 A |  | 100% |  |  |  |  | Raj; Bob; Mark; Patrick | 408h | 408h |
| 31 | 1.2.1.4.1 | **Dataset acquisition** | 7d | 2006-06-05 A | 2006-06-13 A |  | 100% |  |  |  |  | Raj; Bob | 184h | 184h |
| 32 | 1.2.1.4.1.1 | Determine available datasets | 1d | 2006-06-05 A | 2006-06-05 A |  | 100% |  |  |  | finish no earlier than 2006-05-25 | Raj; Bob | 16h | 16h |
| 33 | 1.2.1.4.1.2 | Match datasets to use cases | 1d | 2006-06-06 A | 2006-06-06 A | 32 | 100% |  |  |  |  | Raj; Bob | 16h | 16h |
| 34 | 1.2.1.4.1.3 | Fill out IRB forms | 5d | 2006-06-07 A | 2006-06-13 A | 33 | 100% |  |  |  |  | Bob | 40h | 40h |
| 35 | 1.2.1.5 | **Tool installation** | 22.5d | 2006-06-05 A | 2006-07-05 |  | 65% | 7.88d | 7.5d |  |  | Bioinformatics; Mark; Bill; Sanjeev | 1700h | 1288h |
| 36 | 1.2.1.5.1 | Install and configure caGrid 1.0 infrastructure | 5d | 2006-06-05 A | 2006-06-09 A |  | 100% |  |  |  | start no earlier than 2006-05-29 | Sanjeev | 40h | 40h |
| 37 | 1.2.1.5.2 | **caTissue Core** | 22.5d | 2006-06-05 A | 2006-07-05 A |  | 100% |  |  |  |  | Bioinformatics; Mark; Bill | 740h | 740h |
| 38 | 1.2.1.5.2.1 | Document CDE extension | 5d | 2006-06-05 A | 2006-06-09 A |  | 100% |  |  |  |  | Mark | 40h | 40h |
| 39 | 1.2.1.5.2.2 | Extend model | 5d | 2006-06-12 A | 2006-06-16 A | 38 | 100% |  |  |  |  | Mark | 40h | 40h |
| 40 | 1.2.1.5.2.3 | Apply model to tool | 5d | 2006-06-19 A | 2006-06-23 A | 39 | 100% |  |  |  |  | Bioinformatics | 40h | 40h |
| 41 | 1.2.1.5.2.4 | Develop and Install data service | 2.5d | 2006-06-26 A | 2006-06-28 A | 40 | 100% |  |  |  |  | Bioinformatics; Bill | 40h | 40h |
| 42 | 1.2.1.5.2.5 | Install tool | 5d | 2006-06-28 A | 2006-07-05 A | 41 | 100% |  |  |  |  | Bioinformatics | 40h | 40h |
| 43 | 1.2.1.5.3 | **CAE** | 22.5d | 2006-06-05 A | 2006-07-05 |  | 22% | 17.5d | 7.5d |  |  |  | 200h | 40h |
| 44 | 1.2.1.5.3.1 | Document CDE extension | 5d | 2006-06-05 A | 2006-06-09 A |  | 100% |  |  |  |  | Mark | 40h | 40h |
| 45 | 1.2.1.5.3.2 | Extend model | 5d | 2006-06-12 | 2006-06-16 | 44 |  |  | 7.5d | 0d |  | Mark | 40h |  |
| 46 | 1.2.1.5.3.3 | Apply model to tool | 5d | 2006-06-19 | 2006-06-23 | 45 |  |  | 7.5d | 0d |  | Bioinformatics | 40h |  |
| 47 | 1.2.1.5.3.4 | Develop and Install data service | 2.5d | 2006-06-26 | 2006-06-28 | 46 |  |  | 7.5d | 0d |  | Bioinformatics; Bill | 40h |  |
| 48 | 1.2.1.5.3.5 | Install tool | 5d | 2006-06-28 | 2006-07-05 | 47 |  |  | 7.5d |  |  | Bioinformatics | 40h |  |

| ID | WBS | Task | Duration | Start | Finish | Predecessors | Complete | Remaining | Total slack | Free slack | Constraint | Resources | Work | Actual work |
| --- | --- | --- | --- | --- | --- | --- | --- | --- | --- | --- | --- | --- | --- | --- |
| 49 | 1.2.1.6 | **Develop API for non-caBIG systems (Tumor Registry)** | 20d? | 2006-06-05 A | 2006-06-30 |  | 30% | 14d? | 10d |  |  | SB | 920h | 528h |
| 50 | 1.2.1.6.1 | Develop UML domain model | 15d | 2006-06-05 A | 2006-06-23 A |  | 100% |  |  |  | start no earlier than 2006-06-05 | Ram; Bill; Wilma; Patrick | 480h | 480h |
| 51 | 1.2.1.6.2 | Perform O/R mapping using Hibernate | 15d? | 2006-06-05 | 2006-06-23 |  |  |  | 15d |  | start no earlier than 2006-06-05 | Bill | 120h |  |
| 52 | 1.2.1.6.3 | Perform semantic annotation | 15d? | 2006-06-05 | 2006-06-23 |  |  |  | 10d | 0d | start no earlier than 2006-06-05 | Bill | 120h |  |
| 53 | 1.2.1.6.4 | Generate API using caCORE SDK | 5d | 2006-06-26 | 2006-06-30 | 52 |  |  | 10d |  |  | Bill | 40h |  |
| 54 | 1.2.1.7 | **Design,develop and test distributed query engine architecture** | 30d? | 2006-06-05 A | 2006-07-14 A |  | 100% |  |  |  |  | Srini; Ram | 1000h | 1000h |
| 55 | 1.2.1.7.1 | Finalize federated query schema | 2.5d | 2006-06-05 A | 2006-06-07 A |  | 100% |  |  |  | start no earlier than 2006-05-29 | Srini; Ram | 40h | 40h |
| 56 | 1.2.1.7.2 | Design distributed query engine - Create UML artifacts | 15d? | 2006-06-05 A | 2006-06-23 A |  | 100% |  |  |  | start no earlier than 2006-05-29 | Srini; Ram | 240h | 240h |
| 57 | 1.2.1.7.3 | Code and Test | 30d? | 2006-06-05 A | 2006-07-14 A |  | 100% |  |  |  | start no earlier than 2006-05-29 | Srini | 240h | 240h |
| 58 | 1.2.1.8 | **Design, develop and test core architecture for GUI** | 20d? | 2006-06-12 A | 2006-07-07 A |  | 100% |  |  |  |  | Sanjeev; Ram | 800h | 800h |
| 59 | 1.2.1.8.1 | Create UML artifacts - class and sequence diagram | 10d? | 2006-06-12 A | 2006-06-23 A |  | 100% |  |  |  | start no earlier than 2006-06-12 | Sanjeev; Ram | 160h | 160h |
| 60 | 1.2.1.8.2 | Implement and test core architecture | 10d? | 2006-06-12 A | 2006-06-23 A |  | 100% |  |  |  | start no earlier than 2006-06-12 | Sanjeev; Ram | 160h | 160h |
| 61 | 1.2.1.8.3 | Develop prototype | 20d? | 2006-06-12 A | 2006-07-07 A |  | 100% |  |  |  | start no earlier than 2006-06-12 | Sanjeev | 160h | 160h |
| 62 | 1.2.1.9 | **Basic testing** | 5d | 2006-06-05 A | 2006-06-09 |  | 50% | 2.5d | 25d |  |  | Patrick; Mark | 320h | 120h |
| 63 | 1.2.1.9.1 | **Setup testing environment** | 5d | 2006-06-05 A | 2006-06-09 A |  | 100% |  |  |  |  | Patrick | 80h | 80h |
| 64 | 1.2.1.9.1.1 | Implement setup/tear down of services | 5d | 2006-06-05 A | 2006-06-09 A |  | 100% |  |  |  |  | Patrick | 40h | 40h |
| 65 | 1.2.1.9.2 | **Graphical user interface** | 5d | 2006-06-05 | 2006-06-09 |  |  |  | 25d |  |  | Mark; Patrick | 160h |  |
| 66 | 1.2.1.9.2.1 | Create draft QA test plan | 5d | 2006-06-05 | 2006-06-09 |  |  |  | 25d |  |  | Mark; Patrick | 80h |  |
| 67 | 1.2.1.10 | **Security integration** | 10d | 2006-06-05 A | 2006-06-16 A |  | 100% |  |  |  |  | Patrick; Jeff | 240h | 240h |
| 68 | 1.2.1.10.1 | Identify Duke IdP | 10d | 2006-06-05 A | 2006-06-16 A |  | 100% |  |  |  |  | Jeff | 80h | 80h |
| 69 | 1.2.2 | **Iteration 2** | 30d? | 2006-07-17 A | 2006-08-25 | 20 | 31% | 20.74d? | 0d |  |  |  | 5740h | 1302.46h |
| 70 | 1.2.2.1 | **Final use case document** | 10d | 2006-07-17 A | 2006-07-28 |  |  | 10d | 20d |  |  | Patrick | 160h | 0h |
| 71 | 1.2.2.1.1 | Finalize problem scenarios | 5d | 2006-07-17 | 2006-07-21 |  |  |  | 20d | 0d |  | Patrick | 40h |  |
| 72 | 1.2.2.1.2 | Finalize use cases | 5d | 2006-07-24 A | 2006-07-28 | 71 |  | 5d | 20d |  |  | Patrick | 40h | 0h |

| ID | WBS | Task | Duration | Start | Finish | Predecessors | Complete | Remaining | Total slack | Free slack | Constraint | Resources | Work | Actual work |
| --- | --- | --- | --- | --- | --- | --- | --- | --- | --- | --- | --- | --- | --- | --- |
| 73 | 1.2.2.2 | **Final requirements and specifications document** | 15d | 2006-07-17 | 2006-08-04 |  |  |  | 15d |  |  | Patrick | 240h |  |
| 74 | 1.2.2.2.1 | Finalize requirements | 5d | 2006-07-17 | 2006-07-21 |  |  |  | 15d | 0d |  | Patrick | 40h |  |
| 75 | 1.2.2.2.2 | Finalize traceability matrix | 5d | 2006-07-24 | 2006-07-28 | 74 |  |  | 15d | 0d |  | Patrick | 40h |  |
| 76 | 1.2.2.2.3 | Finalize UML | 5d | 2006-07-31 | 2006-08-04 | 75 |  |  | 15d |  |  | Patrick | 40h |  |
| 77 | 1.2.2.3 | Draft dataset document (final) | 10d | 2006-07-17 | 2006-07-28 |  |  |  | 20d |  |  | Patrick; Bob; Mark | 240h |  |
| 78 | 1.2.2.4 | Construct draft test data | 10d | 2006-07-17 A | 2006-07-28 A |  | 100% |  |  |  |  | Mark | 80h | 80h |
| 79 | 1.2.2.5 | **Tool installation** | 22.5d | 2006-07-17 | 2006-08-16 |  |  |  | 7.5d |  |  | Bioinformatics; Mark | 1100h |  |
| 80 | 1.2.2.5.1 | **caIntegrator** | 22.5d | 2006-07-17 | 2006-08-16 |  |  |  | 7.5d |  |  | Bioinformatics; Mark; Srini | 740h |  |
| 81 | 1.2.2.5.1.1 | Document CDE extension | 5d | 2006-07-17 | 2006-07-21 |  |  |  | 7.5d | 0d |  | Mark | 40h |  |
| 82 | 1.2.2.5.1.2 | Extend model | 5d | 2006-07-24 | 2006-07-28 | 81 |  |  | 7.5d | 0d |  | Mark | 40h |  |
| 83 | 1.2.2.5.1.3 | Apply model to tool | 5d | 2006-07-31 | 2006-08-04 | 82 |  |  | 7.5d | 0d |  | Bioinformatics | 40h |  |
| 84 | 1.2.2.5.1.4 | Develop and Install data service | 2.5d | 2006-08-07 | 2006-08-09 | 83 |  |  | 7.5d | 0d |  | Bioinformatics; Srini | 40h |  |
| 85 | 1.2.2.5.1.5 | Install tool | 5d | 2006-08-09 | 2006-08-16 | 84 |  |  | 7.5d |  |  | Bioinformatics | 40h |  |
| 86 | 1.2.2.6 | **Complete API development for non-caBIG sytems** | 20d? | 2006-07-17 | 2006-08-11 |  |  |  | 10d |  |  | SB | 640h |  |
| 87 | 1.2.2.6.1 | Enhance UML domain model | 20d? | 2006-07-17 | 2006-08-11 |  |  |  | 10d |  | start no earlier than 2006-07-10 | Ram | 160h |  |
| 88 | 1.2.2.6.2 | Complete O/R mapping | 20d? | 2006-07-17 | 2006-08-11 |  |  |  | 10d |  | start no earlier than 2006-07-10 | Sanjeev | 160h |  |
| 89 | 1.2.2.6.3 | Complete semantic annotation | 10d? | 2006-07-17 | 2006-07-28 |  |  |  | 10d | 0d | start no earlier than 2006-07-10 | SB | 80h |  |
| 90 | 1.2.2.6.4 | Generate API using caCORE SDK | 10d? | 2006-07-31 | 2006-08-11 | 89 |  |  | 10d |  |  | Sanjeev | 80h |  |
| 91 | 1.2.2.7 | Implement security | 6.67d | 2006-07-17 | 2006-07-25 |  |  |  | 23.33d |  | start no earlier than 2006-07-10 | Srini; Ram; Vinay | 160h |  |
| 92 | 1.2.2.8 | Develop data services for caBIG/non-caBIG systems | 2.5d | 2006-08-07 | 2006-08-09 |  |  |  | 12.5d |  | start no earlier than 2006-08-07 | Bill; Sanjeev; Srini; Ram | 80h |  |
| 93 | 1.2.2.9 | **Design develop and test distributed query engine architecture** | 30d | 2006-07-17 A | 2006-08-25 |  | 75% | 7.5d | 0d |  |  | Srini | 560h | 420h |
| 94 | 1.2.2.9.1 | Enhance UML artifacts | 10d | 2006-07-17 | 2006-07-28 |  |  |  | 20d |  | start no earlier than 2006-07-10 | Srini | 80h |  |
| 95 | 1.2.2.9.2 | Code and Test | 30d | 2006-07-17 A | 2006-08-25 A |  | 100% |  |  |  | start no earlier than 2006-07-10 | Srini | 240h | 240h |
| 96 | 1.2.2.10 | **Design, develop and test GUI** | 30d? | 2006-07-17 A | 2006-08-25 |  | 60% | 12d? | 0d |  |  | Sanjeev | 640h | 384h |
| 97 | 1.2.2.10.1 | Enhance UML artifacts | 20d? | 2006-07-17 | 2006-08-11 |  |  |  | 10d |  | finish no earlier than 2006-08-04 | Sanjeev | 160h |  |
| 98 | 1.2.2.10.2 | Enhance prototype | 30d | 2006-07-17 A | 2006-08-25 A |  | 100% |  |  |  | start no earlier than 2006-07-10 | Sanjeev | 240h | 240h |

| ID | WBS | Task | Duration | Start | Finish | Predecessors | Complete | Remaining | Total slack | Free slack | Constraint | Resources | Work | Actual work |
| --- | --- | --- | --- | --- | --- | --- | --- | --- | --- | --- | --- | --- | --- | --- |
| 99 | 1.2.2.11 | **System testing** | 20d | 2006-07-17 A | 2006-08-11 |  | 31% | 13.85d | 10d |  |  | Patrick; Mark | 1840h | 418.46h |
| 100 | 1.2.2.11.1 | Draft testing report | 20d | 2006-07-17 A | 2006-08-11 A |  | 100% |  |  |  |  | Patrick; Mark | 320h | 320h |
| 101 | 1.2.2.11.2 | **Domain services** | 15d | 2006-07-17 | 2006-08-04 |  |  |  | 15d |  |  | Patrick; Mark | 480h |  |
| 102 | 1.2.2.11.2.1 | Translate use cases into queries | 10d | 2006-07-17 | 2006-07-28 |  |  |  | 15d | 0d |  | Patrick; Mark | 160h |  |
| 103 | 1.2.2.11.2.2 | Implement base data test | 5d | 2006-07-31 | 2006-08-04 | 102 |  |  | 15d |  |  | Patrick; Mark | 80h |  |
| 104 | 1.2.2.11.3 | **Distributed query engine** | 15d | 2006-07-17 | 2006-08-04 |  |  |  | 15d |  |  | Patrick; Mark | 480h |  |
| 105 | 1.2.2.11.3.1 | Translate use cases into queries | 10d | 2006-07-17 | 2006-07-28 |  |  |  | 15d | 0d |  | Patrick; Mark | 160h |  |
| 106 | 1.2.2.11.3.2 | Implement base data test | 5d | 2006-07-31 | 2006-08-04 | 105 |  |  | 15d |  |  | Patrick; Mark | 80h |  |
| 107 | 1.2.2.11.4 | **Graphical user interface** | 15d | 2006-07-17 | 2006-08-04 |  |  |  | 15d |  |  | Mark | 240h |  |
| 108 | 1.2.2.11.4.1 | Final QA test plan | 15d | 2006-07-17 | 2006-08-04 |  |  |  | 15d |  |  | Mark | 120h |  |
| 109 | 1.3 | **Construction** | 40d | 2006-08-28 | 2006-10-20 | 19 |  |  | 0d |  |  |  | 3500h |  |
| 110 | 1.3.1 | **Iteration 1** | 20d | 2006-08-28 | 2006-09-22 |  |  |  | 0d |  |  |  | 2060h |  |
| 111 | 1.3.1.1 | Final dataset document (draft) | 20d | 2006-08-28 | 2006-09-22 |  |  |  | 0d |  |  |  |  |  |
| 112 | 1.3.1.2 | **Dataset preparation** | 20d | 2006-08-28 | 2006-09-22 |  |  |  | 0d |  |  |  | 160h |  |
| 113 | 1.3.1.2.1 | Construct demo datasets | 20d | 2006-08-28 | 2006-09-22 |  |  |  | 0d |  |  | Mark | 160h |  |
| 114 | 1.3.1.3 | Enhance data services for caBIG/non-caBIG systems | 5d | 2006-08-28 | 2006-09-01 |  |  |  | 15d |  | start no earlier than 2006-08-21 | SB | 40h |  |
| 115 | 1.3.1.4 | Implement distributed query engine | 20d | 2006-08-28 | 2006-09-22 |  |  |  | 0d |  | start no earlier than 2006-08-21 | SB | 160h |  |
| 116 | 1.3.1.5 | **Implement GUI** | 15d | 2006-08-28 | 2006-09-15 |  |  |  | 5d |  |  | Sanjeev | 240h |  |
| 117 | 1.3.1.5.1 | Implement simplified GUI | 15d | 2006-08-28 | 2006-09-15 |  |  |  | 5d |  |  | Sanjeev | 120h |  |
| 118 | 1.3.1.6 | **Testing** | 20d | 2006-08-28 | 2006-09-22 |  |  |  | 0d |  |  | Patrick; Mark | 1460h |  |
| 119 | 1.3.1.6.1 | **Domain services** | 20d | 2006-08-28 | 2006-09-22 |  |  |  | 0d |  |  | Patrick; Mark | 480h |  |
| 120 | 1.3.1.6.1.1 | Implement data test | 20d | 2006-08-28 | 2006-09-22 |  |  |  | 0d |  |  | Mark | 160h |  |
| 121 | 1.3.1.6.2 | **Distributed query engine** | 20d | 2006-08-28 | 2006-09-22 |  |  |  | 0d |  |  | Patrick; Mark | 480h |  |
| 122 | 1.3.1.6.2.1 | Implement data test | 20d | 2006-08-28 | 2006-09-22 |  |  |  | 0d |  |  | Mark | 160h |  |

| ID | WBS | Task | Duration | Start | Finish | Predecessors | Total slack | Free slack | Constraint | Resources | Work |
| --- | --- | --- | --- | --- | --- | --- | --- | --- | --- | --- | --- |
| 123 | 1.3.1.6.3 | **Graphical user interface** | 3.75d | 2006-08-28 | 2006-08-31 |  | 16.25d |  |  | Mark; domain expert | 180h |
| 124 | 1.3.1.6.3.1 | Perform QA tests | 3.75d | 2006-08-28 | 2006-08-31 |  | 16.25d |  |  | Mark; Raj; Janet; TBD | 120h |
| 125 | 1.3.2 | **Iteration 2** | 20d | 2006-09-25 | 2006-10-20 | 110 | 0d |  |  |  | 1440h |
| 126 | 1.3.2.1 | Final dataset document (final) | 15d | 2006-09-25 | 2006-10-13 |  | 5d |  |  |  |  |
| 127 | 1.3.2.2 | **Construct demo datasets** | 10d | 2006-09-25 | 2006-10-06 |  | 10d |  |  | Mark | 160h |
| 128 | 1.3.2.2.1 | Construct tumor registry dataset | 5d | 2006-09-25 | 2006-09-29 |  | 10d | 0d |  | Mark | 40h |
| 129 | 1.3.2.2.2 | Construct GEMS Illumina dataset | 5d | 2006-10-02 | 2006-10-06 | 128 | 10d |  |  | Mark | 40h |
| 130 | 1.3.2.3 | Complete distributed query engine | 20d | 2006-09-25 | 2006-10-20 |  | 0d |  | start no earlier than 2006-09-18 | SB | 160h |
| 131 | 1.3.2.4 | **Complete GUI** | 10d | 2006-09-25 | 2006-10-06 |  | 10d |  |  | SB | 80h |
| 132 | 1.3.2.4.1 | Complete simplified GUI | 10d | 2006-09-25 | 2006-10-06 |  | 10d |  |  |  |  |
| 133 | 1.3.2.4.2 | Create GUI installer | 5d | 2006-09-25 | 2006-09-29 |  | 15d |  |  |  |  |
| 134 | 1.3.2.5 | Develop draft technical architecture guide | 10d | 2006-10-02 | 2006-10-13 |  | 5d |  | start no earlier than 2006-10-02 | SB | 80h |
| 135 | 1.3.2.6 | **Deployment** | 5d | 2006-09-25 | 2006-09-29 |  | 15d |  |  |  |  |
| 136 | 1.3.2.6.1 | Deploy public services | 5d | 2006-09-25 | 2006-09-29 |  | 15d |  |  |  |  |
| 137 | 1.3.2.7 | **System testing** | 20d | 2006-09-25 | 2006-10-20 |  | 0d |  |  |  | 960h |
| 138 | 1.3.2.7.1 | **Domain services** | 20d | 2006-09-25 | 2006-10-20 |  | 0d |  |  | Mark | 320h |
| 139 | 1.3.2.7.1.1 | Final testing report | 20d | 2006-09-25 | 2006-10-20 |  | 0d |  |  | Mark | 160h |
| 140 | 1.3.2.7.2 | **Distributed query engine** | 20d | 2006-09-25 | 2006-10-20 |  | 0d |  |  | Mark | 320h |
| 141 | 1.3.2.7.2.1 | Final testing report | 20d | 2006-09-25 | 2006-10-20 |  | 0d |  |  | Mark | 160h |
| 142 | 1.3.2.7.3 | **Graphical user interface** | 20d | 2006-09-25 | 2006-10-20 |  | 0d |  |  | Mark | 320h |
| 143 | 1.3.2.7.3.1 | Final testing report | 20d | 2006-09-25 | 2006-10-20 |  | 0d |  |  | Mark | 160h |
| 144 | 1.4 | **Transition** | 10d | 2006-10-23 | 2006-11-03 | 109 | 0d |  |  |  | 80h |
| 145 | 1.4.1 | Final testing | 10d | 2006-10-23 | 2006-11-03 |  | 0d |  |  |  |  |
| 146 | 1.4.2 | **Final documentation** | 10d | 2006-10-23 | 2006-11-03 |  | 0d |  |  |  | 80h |
| 147 | 1.4.2.1 | Complete technical architecture guide | 10d | 2006-10-23 | 2006-11-03 |  | 0d |  | start no earlier than 2006-10-16 | SB | 80h |

| ID | WBS | Task | Duration | Start | Finish | Predecessors | Total slack | Free slack | Constraint | Resources | Work |
| --- | --- | --- | --- | --- | --- | --- | --- | --- | --- | --- | --- |
| 148 | 1.5 | **Meetings** | 107d | 2006-05-01 | 2006-09-26 |  | 28d |  |  |  | 56h |
| 149 | 1.5.1 | Project kickoff | 1d | 2006-05-01 | 2006-05-01 |  | 133d | 0d |  | Jamie; Bob; Patrick | 24h |
| 150 | 1.5.2 | First F2F | 2d | 2006-05-24 | 2006-05-25 |  | 116d |  | finish no earlier than 2006-05-25 | Everyone | 16h |
| 151 | 1.5.3 | Second F2F | 2d | 2006-09-25 | 2006-09-26 |  | 28d |  | start no earlier than 2006-09-25 | Everyone | 16h |
| 152 | 1.6 | **Deliverables** | 132d | 2006-05-02 | 2006-11-01 | 149 | 2d |  |  |  | 160h |
| 153 | 1.6.1 | Submit project management plan | 1d | 2006-06-01 | 2006-06-01 |  | 111d |  | start no earlier than 2006-06-01 | Patrick | 8h |
| 154 | 1.6.2 | Submit communications plan | 1d | 2006-06-01 | 2006-06-01 |  | 111d |  | start no earlier than 2006-06-01 | Patrick | 8h |
| 155 | 1.6.3 | Submit risk management matrix | 1d | 2006-06-01 | 2006-06-01 |  | 111d |  | start no earlier than 2006-06-01 | Patrick | 8h |
| 156 | 1.6.4 | Submit draft use case document | 1d | 2006-07-03 | 2006-07-03 |  | 89d |  | start no earlier than 2006-07-03 | Patrick | 8h |
| 157 | 1.6.5 | Submit final use case document | 1d | 2006-08-01 | 2006-08-01 |  | 68d |  | start no earlier than 2006-08-01 | Patrick | 8h |
| 158 | 1.6.6 | Submit draft requirements and specifications document | 1d | 2006-06-01 | 2006-06-01 |  | 111d |  | start no earlier than 2006-06-01 | Patrick | 8h |
| 159 | 1.6.7 | Submit final requirements and specifications document | 1d | 2006-07-03 | 2006-07-03 |  | 89d |  | start no earlier than 2006-07-03 | Patrick | 8h |
| 160 | 1.6.8 | Submit draft UML model | 1d | 2006-08-01 | 2006-08-01 |  | 68d |  | start no earlier than 2006-08-01 | Patrick | 8h |
| 161 | 1.6.9 | Submit draft API | 1d | 2006-11-01 | 2006-11-01 |  | 2d |  | start no earlier than 2006-11-01 | Patrick | 8h |
| 162 | 1.6.10 | Submit XMI file | 1d | 2006-10-02 | 2006-10-02 |  | 24d |  | start no earlier than 2006-10-02 | Patrick | 8h |
| 163 | 1.6.11 | Submit CDE use report | 1d | 2006-11-01 | 2006-11-01 |  | 2d |  | start no earlier than 2006-11-01 | Patrick | 8h |
| 164 | 1.6.12 | Submit draft test approach | 1d | 2006-06-01 | 2006-06-01 |  | 111d |  | start no earlier than 2006-06-01 | Patrick | 8h |
| 165 | 1.6.13 | Submit final test approach | 1d | 2006-07-03 | 2006-07-03 |  | 89d |  | start no earlier than 2006-07-03 | Patrick | 8h |
| 166 | 1.6.14 | Submit draft datasets | 1d | 2006-08-01 | 2006-08-01 |  | 68d |  | start no earlier than 2006-08-01 | Patrick | 8h |
| 167 | 1.6.15 | Submit final datasets | 1d | 2006-11-01 | 2006-11-01 |  | 2d |  | start no earlier than 2006-11-01 | Patrick | 8h |
| 168 | 1.6.16 | Submit draft prototype code | 1d | 2006-08-01 | 2006-08-01 |  | 68d |  | start no earlier than 2006-08-01 | Patrick | 8h |
| 169 | 1.6.17 | Submit final prototype code | 1d | 2006-11-01 | 2006-11-01 |  | 2d |  | start no earlier than 2006-11-01 | Patrick | 8h |
| 170 | 1.6.18 | Submit testing report for draft prototype | 1d | 2006-08-01 | 2006-08-01 |  | 68d |  | start no earlier than 2006-08-01 | Patrick | 8h |
| 171 | 1.6.19 | Submit testing report for final prototype | 1d | 2006-11-01 | 2006-11-01 |  | 2d |  | start no earlier than 2006-11-01 | Patrick | 8h |
| 172 | 1.6.20 | Submit technical/architectural guide | 1d | 2006-05-02 | 2006-05-02 |  | 133d |  |  | Patrick | 8h |

| ID | WBS | Task | Duration | Start | Finish | Predecessors | Complete | Remaining | Total slack | Free slack | Constraint | Resources | Work | Actual work |
| --- | --- | --- | --- | --- | --- | --- | --- | --- | --- | --- | --- | --- | --- | --- |
| 173 | 2 | **Phase 1 wrapup** | 132d | 2006-05-01 A | 2006-10-31 |  | 33% | 88.29d | 3d |  |  |  | 3048h | 838.23h |
| 174 | 2.1 | **GUI** | 114d | 2006-05-01 A | 2006-10-05 |  | 71% | 33.1d | 21d |  |  | Sanjeev | 360h | 244.13h |
| 175 | 2.1.1 | Discovery | 5d | 2006-09-27 A | 2006-10-03 A |  | 100% |  |  |  | start no earlier than 2006-09-27 | Sanjeev | 40h | 40h |
| 176 | 2.1.2 | **Simplified GUI XML config** | 2d | 2006-10-04 | 2006-10-05 |  |  |  | 21d |  |  | Sanjeev | 48h |  |
| 177 | 2.1.2.1 | Tumor registry | 2d | 2006-10-04 | 2006-10-05 |  |  |  | 21d |  | start no earlier than 2006-10-04 | Sanjeev | 16h |  |
| 178 | 2.1.2.2 | SNP | 2d | 2006-10-04 | 2006-10-05 |  |  |  | 21d |  | start no earlier than 2006-10-04 | Sanjeev | 16h |  |
| 179 | 2.1.3 | Java webstart | 10d | 2006-09-20 A | 2006-10-03 A |  | 100% |  |  |  | start no earlier than 2006-09-20 | Sanjeev | 80h | 80h |
| 180 | 2.1.4 | Error handling, code tightening | 5d | 2006-09-27 | 2006-10-03 |  |  |  | 23d |  | start no earlier than 2006-09-27 | Sanjeev | 40h |  |
| 181 | 2.1.5 | New extract with generalizations | 5d | 2006-09-27 A | 2006-10-03 A |  | 100% |  |  |  | start no earlier than 2006-09-27 | Sanjeev | 40h | 40h |
| 182 | 2.1.6 | Export results to file | 2d | 2006-05-01 A | 2006-05-02 A |  | 100% |  |  |  |  | Sanjeev | 16h | 16h |
| 183 | 2.2 | **Domain services** | 29d | 2006-09-11 A | 2006-10-19 |  | 51% | 14.19d | 11d |  |  |  | 1184h | 516.11h |
| 184 | 2.2.1 | **Tumor Registry** | 27d | 2006-09-11 A | 2006-10-17 |  | 42% | 15.75d | 13d |  |  | Bill | 312h | 130h |
| 185 | 2.2.1.1 | Implement database | 5d | 2006-09-11 A | 2006-09-15 A |  | 100% |  |  |  |  | Bill | 40h | 40h |
| 186 | 2.2.1.2 | Implement service | 5d | 2006-10-09 | 2006-10-13 | 185 |  |  | 13d | 0d | start no earlier than 2006-10-09 | Sanjeev | 40h |  |
| 187 | 2.2.1.3 | Deployed | 2d | 2006-10-16 | 2006-10-17 | 186 |  |  | 13d |  | start no earlier than 2006-10-16 | Bill | 16h |  |
| 188 | 2.2.2 | **caTissue CORE** | 5d | 2006-10-09 | 2006-10-13 |  |  |  | 15d |  |  | Sanjeev | 80h |  |
| 189 | 2.2.2.1 | Regen grid service | 5d | 2006-10-09 | 2006-10-13 |  |  |  | 15d |  | start no earlier than 2006-10-09 | Sanjeev | 40h |  |
| 190 | 2.2.3 | **CAE** | 29d | 2006-09-11 A | 2006-10-19 |  | 53% | 13.74d | 11d |  |  | Srini; Bill | 616h | 242.1h |
| 191 | 2.2.3.1 | Extend model | 5d | 2006-09-11 A | 2006-09-15 A |  | 100% |  |  |  |  | Bill | 40h | 40h |
| 192 | 2.2.3.2 | Register extension | 5d | 2006-10-09 | 2006-10-13 |  |  |  | 11d | 0d | start no earlier than 2006-10-09 | Bill | 40h |  |
| 193 | 2.2.3.3 | Implement database | 5d | 2006-09-11 A | 2006-09-15 A |  | 100% |  |  |  |  | Bill | 40h | 40h |
| 194 | 2.2.3.4 | Implement service | 2d | 2006-10-16 | 2006-10-17 | 192 |  |  | 11d | 0d | start no earlier than 2006-10-13 | Srini | 16h |  |
| 195 | 2.2.3.5 | Deployed | 2d | 2006-10-18 | 2006-10-19 | 194 |  |  | 11d |  |  | Srini | 16h |  |
| 196 | 2.2.4 | **SNP** | 11d | 2006-09-27 A | 2006-10-11 |  | 82% | 2d | 17d |  |  | Srini | 176h | 144h |
| 197 | 2.2.4.1 | Install database | 4d | 2006-09-27 A | 2006-10-02 A |  | 100% |  |  |  | start no earlier than 2006-09-27 | Srini | 32h | 32h |
| 198 | 2.2.4.2 | Implement service | 5d | 2006-10-03 A | 2006-10-09 A | 197 | 100% |  |  |  |  | Srini | 40h | 40h |
| 199 | 2.2.4.3 | Deploy | 2d | 2006-10-10 | 2006-10-11 | 198 |  |  | 17d |  |  | Srini | 16h |  |

| ID | WBS | Task | Duration | Start | Finish | Complete | Remaining | Total slack | Constraint | Resources | Work | Actual work |
| --- | --- | --- | --- | --- | --- | --- | --- | --- | --- | --- | --- | --- |
| 200 | 2.3 | **Test data** | 19d | 2006-09-20 A | 2006-10-16 | 25% | 14.25d | 14d |  | Mark | 312h | 78h |
| 201 | 2.3.1 | CAE | 5d | 2006-09-20 A | 2006-09-26 A | 100% |  |  |  | Mark | 40h | 40h |
| 202 | 2.3.2 | caTissue CORE | 5d | 2006-09-27 | 2006-10-03 |  |  | 23d | start no earlier than 2006-09-27 | Mark | 40h |  |
| 203 | 2.3.3 | SNP | 5d | 2006-10-10 | 2006-10-16 |  |  | 14d | start no earlier than 2006-10-10 | Mark | 40h |  |
| 204 | 2.3.4 | Tumor Registry | 5d | 2006-10-10 | 2006-10-16 |  |  | 14d | start no earlier than 2006-10-10 | Bill | 40h |  |
| 205 | 2.4 | **Real data** | 14d | 2006-09-27 | 2006-10-16 |  |  | 14d |  | Chris; Bill | 288h |  |
| 206 | 2.4.1 | caTissue CORE | 3d | 2006-09-27 | 2006-09-29 |  |  | 25d | start no earlier than 2006-09-27 | Chris | 24h |  |
| 207 | 2.4.2 | Tumor Registry | 5d | 2006-10-10 | 2006-10-16 |  |  | 14d | start no earlier than 2006-10-10 | Bill | 40h |  |
| 208 | 2.5 | **Testing** | 23d | 2006-09-27 | 2006-10-27 |  |  | 5d |  | Patrick | 824h |  |
| 209 | 2.5.1 | Construct DCQL queries | 20d | 2006-09-27 | 2006-10-24 |  |  | 8d | start no earlier than 2006-09-27 | Sanjeev; Srini; Patrick | 480h |  |
| 210 | 2.5.2 | Integration tests | 10d | 2006-09-27 | 2006-10-10 |  |  | 18d | start no earlier than 2006-09-27 | Patrick | 80h |  |
| 211 | 2.5.3 | QA | 10d | 2006-10-16 | 2006-10-27 |  |  | 5d | start no earlier than 2006-10-16 | Raj | 80h |  |
| 212 | 2.6 | **Deliverables** | 1d | 2006-10-31 | 2006-10-31 |  |  | 3d |  |  | 80h |  |
| 213 | 2.6.1 | **Silver compatibility** | 1d | 2006-10-31 | 2006-10-31 |  |  | 3d |  | Bill | 24h |  |
| 214 | 2.6.1.1 | Semantic XMI | 1d | 2006-10-31 | 2006-10-31 |  |  | 3d | start no earlier than 2006-10-31 | Bill | 8h |  |
| 215 | 2.6.1.2 | CDE use report | 1d | 2006-10-31 | 2006-10-31 |  |  | 3d | start no earlier than 2006-10-31 | Bill | 8h |  |
| 216 | 2.6.2 | Architecture guide | 1d | 2006-10-31 | 2006-10-31 |  |  | 3d | start no earlier than 2006-10-31 | Ram; Patrick | 16h |  |
| 217 | 2.6.3 | Final use cases | 1d | 2006-10-31 | 2006-10-31 |  |  | 3d | start no earlier than 2006-10-31 | Patrick | 8h |  |
| 218 | 2.6.4 | Final requirements | 1d | 2006-10-31 | 2006-10-31 |  |  | 3d | start no earlier than 2006-10-31 | Patrick | 8h |  |
| 219 | 2.6.5 | Draft datasets | 1d | 2006-10-31 | 2006-10-31 |  |  | 3d | start no earlier than 2006-10-31 | Patrick | 8h |  |
| 220 | 2.6.6 | Final datasets | 1d | 2006-10-31 | 2006-10-31 |  |  | 3d | start no earlier than 2006-10-31 | Patrick | 8h |  |
| 221 | 2.6.7 | Draft API | 1d | 2006-10-31 | 2006-10-31 |  |  | 3d | start no earlier than 2006-10-31 | Patrick | 8h |  |
| 222 | 3 | **Phase 2** | 52d? | 2006-05-01 | 2006-07-11 |  |  | 83d |  |  | 3342.67h |  |
| 223 | 3.1 | Management | 1d? | 2006-05-01 | 2006-05-01 |  |  | 134d |  |  |  |  |
| 224 | 3.2 | Use case definition | 1d? | 2006-05-01 | 2006-05-01 |  |  | 134d |  |  |  |  |
| 225 | 3.3 | Dataset migration | 1d? | 2006-05-01 | 2006-05-01 |  |  | 134d |  |  |  |  |
| 226 | 3.4 | Tool installation | 1d? | 2006-05-01 | 2006-05-01 |  |  | 134d |  |  |  |  |
| 227 | 3.5 | Testing | 1d? | 2006-05-01 | 2006-05-01 |  |  | 134d |  |  |  |  |

| ID | WBS | Task | Duration | Start | Finish | Predecessors | Total slack | Free slack | Resources | Work |
| --- | --- | --- | --- | --- | --- | --- | --- | --- | --- | --- |
| 228 | 3.6 | **Dataset preparation** | 52d | 2006-05-01 | 2006-07-11 |  | 83d |  | Mark | 1636h |
| 229 | 3.6.1 | **Tumor registry** | 20d | 2006-06-14 | 2006-07-11 | 31 | 83d |  | Mark | 320h |
| 230 | 3.6.1.1 | CDE document | 5d | 2006-06-14 | 2006-06-20 |  | 83d | 0d | Mark | 40h |
| 231 | 3.6.1.2 | Dataset deidentification | 10d | 2006-06-21 | 2006-07-04 | 230 | 83d | 0d | Mark | 80h |
| 232 | 3.6.1.3 | Expose database | 5d | 2006-07-05 | 2006-07-11 | 231 | 83d |  | Mark | 40h |
| 233 | 3.6.2 | **GEMS Illumina** | 20d | 2006-05-01 | 2006-05-26 |  | 115d |  | Mark | 320h |
| 234 | 3.6.2.1 | CDE document | 5d | 2006-05-01 | 2006-05-05 |  | 115d | 0d | Mark | 40h |
| 235 | 3.6.2.2 | Dataset deidentification | 10d | 2006-05-08 | 2006-05-19 | 234 | 115d | 0d | Mark | 80h |
| 236 | 3.6.2.3 | Expose database | 5d | 2006-05-22 | 2006-05-26 | 235 | 115d |  | Mark | 40h |
| 237 | 3.6.3 | **MAW3** | 12.5d | 2006-06-14 | 2006-06-30 | 31 | 90.5d |  | Mark | 260h |
| 238 | 3.6.3.1 | Document CDE usage | 2.5d | 2006-06-14 | 2006-06-16 |  | 90.5d | 0d | Mark; Chris | 40h |
| 239 | 3.6.3.2 | Dataset deidentification | 5d | 2006-06-16 | 2006-06-23 | 238 | 90.5d | 0d | Mark; Chris | 80h |
| 240 | 3.6.3.3 | Expose database | 5d | 2006-06-23 | 2006-06-30 | 239 | 90.5d |  | Mark.Chris | 40h |
| 241 | 3.6.4 | **DSR** | 20d | 2006-06-14 | 2006-07-11 | 31 | 83d |  | Mark | 320h |
| 242 | 3.6.4.1 | CDE document | 5d | 2006-06-14 | 2006-06-20 |  | 83d | 0d | Mark | 40h |
| 243 | 3.6.4.2 | Dataset deidentification | 10d | 2006-06-21 | 2006-07-04 | 242 | 83d | 0d | Mark | 80h |
| 244 | 3.6.4.3 | Expose database | 5d | 2006-07-05 | 2006-07-11 | 243 | 83d |  | Mark | 40h |
| 245 | 3.7 | **Implement security** | 10d | 2006-05-01 | 2006-05-12 |  | 125d |  |  | 80h |
| 246 | 3.7.1 | Integrate Duke IdP with IdP grid service | 10d | 2006-05-01 | 2006-05-12 |  | 125d |  | Patrick | 80h |
| 247 | 3.8 | **Basic testing** | 40d | 2006-05-01 | 2006-06-23 |  | 95d |  |  | 480h |
| 248 | 3.8.1 | **Domain services** | 10d | 2006-05-01 | 2006-05-12 |  | 125d |  | Patrick | 160h |
| 249 | 3.8.1.1 | Implement discovery test | 5d | 2006-05-01 | 2006-05-05 |  | 125d | 0d | Patrick | 40h |
| 250 | 3.8.1.2 | Implement performance test | 5d | 2006-05-08 | 2006-05-12 | 249 | 125d |  | Patrick | 40h |
| 251 | 3.8.2 | **Distributed query engine** | 10d | 2006-06-12 | 2006-06-23 | 63 | 95d |  | Patrick | 160h |
| 252 | 3.8.2.1 | Implement discovery test | 5d | 2006-06-12 | 2006-06-16 |  | 95d | 0d | Patrick | 40h |
| 253 | 3.8.2.2 | Implement performance test | 5d | 2006-06-19 | 2006-06-23 | 252 | 95d |  | Patrick | 40h |

| ID | WBS | Task | Duration | Start | Finish | Predecessors | Total slack | Free slack | Resources | Work |
| --- | --- | --- | --- | --- | --- | --- | --- | --- | --- | --- |
| 254 | 3.8.3 | **System testing** | 5d | 2006-05-01 | 2006-05-05 |  | 130d |  |  | 160h |
| 255 | 3.8.3.1 | **Domain services** | 5d | 2006-05-01 | 2006-05-05 |  | 130d |  |  | 80h |
| 256 | 3.8.3.1.1 | Implement security test | 5d | 2006-05-01 | 2006-05-05 |  | 130d |  | Patrick | 40h |
| 257 | 3.8.3.1.2 | Implement metadata test | 5d | 2006-05-01 | 2006-05-05 |  | 130d |  | Patrick | 40h |
| 258 | 3.8.3.2 | **DQE** | 5d | 2006-05-01 | 2006-05-05 |  | 130d |  |  | 80h |
| 259 | 3.8.3.2.1 | Implement security test | 5d | 2006-05-01 | 2006-05-05 |  | 130d |  | Patrick | 40h |
| 260 | 3.8.3.2.2 | Implement metadata test | 5d | 2006-05-01 | 2006-05-05 |  | 130d |  | Patrick | 40h |
| 261 | 3.9 | **caTIES** | 22.5d | 2006-05-01 | 2006-05-31 |  | 112.5d |  | Bioinformatics; Mark | 560h |
| 262 | 3.9.1 | Document CDE extension | 5d | 2006-05-01 | 2006-05-05 |  | 112.5d | 0d | Mark | 40h |
| 263 | 3.9.2 | Extend model | 5d | 2006-05-08 | 2006-05-12 | 262 | 112.5d | 0d | Mark | 40h |
| 264 | 3.9.3 | Apply model to tool | 5d | 2006-05-15 | 2006-05-19 | 263 | 112.5d | 0d | Bioinformatics | 40h |
| 265 | 3.9.4 | Develop and Install data service | 2.5d | 2006-05-22 | 2006-05-24 | 264 | 112.5d | 0d | Bioinformatics; Sanjeev | 40h |
| 266 | 3.9.5 | Install tool | 5d | 2006-05-24 | 2006-05-31 | 265 | 112.5d |  | Bioinformatics | 40h |
| 267 | 3.10 | **CTOM** | 21.67d | 2006-05-01 | 2006-05-30 |  | 113.33d |  | Bioinformatics; Mark | 586.67h |
| 268 | 3.10.1 | Evaluate CTOM for appropriate model and APIs per Risk 5 | 5d | 2006-05-01 | 2006-05-05 |  | 130d |  | Ram | 40h |
| 269 | 3.10.2 | Document CDE extension | 5d | 2006-05-01 | 2006-05-05 |  | 113.33d | 0d | Mark | 40h |
| 270 | 3.10.3 | Extend model | 5d | 2006-05-08 | 2006-05-12 | 269 | 113.33d | 0d | Mark | 40h |
| 271 | 3.10.4 | Apply model to tool | 5d | 2006-05-15 | 2006-05-19 | 270 | 113.33d | 0d | Bioinformatics | 40h |
| 272 | 3.10.5 | Develop and Install data service | 1.67d | 2006-05-22 | 2006-05-23 | 271 | 113.33d | 0d | Bioinformatics; Bill; Ram | 40h |
| 273 | 3.10.6 | Install tool | 5d | 2006-05-23 | 2006-05-30 | 272 | 113.33d |  | Bioinformatics | 40h |
